# Casa6

Schedule from MS Project XML, 1997-12-01 to 1998-02-12.
Training Park

## Calendars

- Estándar: Mon-Fri 07:30-12:00, 13:00-16:30; Sat-Sun off.

## Resources

| Resource |
| --- |
| Carpinteros |
| Electricistas |
| Decorador de Interiores |
| Obreros |
| Albañiles |
| Fontaneros |

## Schedule

| ID | Task | Duration | Start | Finish | Predecessors | Resources | NuevaColumna |
| --- | --- | --- | --- | --- | --- | --- | --- |
| 1 | Fundamentos | 0d | 1997-12-01 | 1997-12-04 |  |  | 1 |
| 2 | Forma | 0d | 1997-12-01 | 1997-12-04 |  | Albañiles | 5 |
| 3 | Encofrado | 0d | 1997-12-04 | 1997-12-04 | 2FS+3d | Albañiles | 25 |
| 4 | Fase Estructura | 0d | 1997-12-08 | 1998-02-03 | 3FS+7h |  | 5 |
| 5 | Marcos | 0d | 1997-12-08 | 1997-12-19 |  |  | 1 |
| 6 | Paredes | 0d | 1998-01-16 | 1998-02-03 | 5FS+2w, 8FS+19d |  | 7 |
| 7 | Techos | 0d | 1997-12-22 | 1998-01-02 | 5FS+2w |  | 3 |
| 8 | Mecánica | 0d | 1997-12-22 | 1998-01-15 | 5FS+2w |  | 5 |
| 9 | Calefacción | 0d | 1997-12-22 | 1997-12-26 |  | Electricistas | 5 |
| 10 | Aire Acondicionado | 0d | 1997-12-26 | 1998-01-01 | 9SS+36h | Electricistas | 7 |
| 11 | Fontanería | 0d | 1997-12-22 | 1997-12-30 |  | Fontaneros [200%] | 1 |
| 12 | Electricidad | 0d | 1998-01-02 | 1998-01-15 |  | Electricistas | 4 |
| 13 | Acabado Exterior | 0d | 1998-02-03 | 1998-02-12 | 4FS+41.5d |  | 5 |
| 14 | Colocar Puertas | 0d | 1998-02-03 | 1998-02-05 |  | Carpinteros | 25 |
| 15 | Instalar Ventanas | 0d | 1998-02-03 | 1998-02-12 |  | Carpinteros | 4 |
| 16 | Fin | 0d | 1998-02-12 | 1998-02-12 | 13FS+7d |  | 7 |
