# Casa6

Schedule from MS Project XML, 2018-07-16 to 2019-08-26, A marks actual dates.
Training Park

## Calendars

- Estándar: Mon-Fri 07:30-12:00, 13:00-16:30; Sat-Sun off.

## Resources

| Resource |
| --- |
| Carpinteros |
| Electricistas |
| Decorador de Interiores |
| Obreros |
| Albañiles |
| Fontaneros |
| Gerente de Proyecto PlanERP |
| Líder del Proyecto/Desarrollo PlanERP |
| Analista Procesos PlanERP |
| Analista de Calidad PlanERP |
| Especialista Base de Datos PlanERP |
| Consultor Especialista en Procesos de GADs PlanERP |

## Schedule

| ID | WBS | Task | Duration | Start | Finish | Predecessors | Remaining | Actual start | Actual finish | Resources | Porcentage Avance |
| --- | --- | --- | --- | --- | --- | --- | --- | --- | --- | --- | --- |
| 1 | 0 | Casa6 | 294.29d? | 2018-07-16 A | 2019-08-26 |  |  |  |  |  |  |
| 2 | 2 | **Fundamentos** | 294.29d |  |  |  | 294.29d | 2018-07-16 |  |  |  |
| 3 | 2.1 | **Forma** | 3d |  |  |  | 3d | 2018-07-16 |  |  |  |
| 4 | 2.1.1 | **Encofrado** | 9d |  |  |  | 9d | 2018-07-16 |  |  |  |
| 5 | 2.1.1.1 | Actividades de Gestión del Proyecto | 2.29d |  |  |  | 2.29d | 2018-07-16 |  |  |  |
| 6 | 2.2 | Revisión de Información de Contrato y Anexos | 7h |  |  | 3FS+3d |  | 2018-07-16 | 2018-07-16 |  |  |
| 7 | 2.3 | **Fase Estructura** |  |  |  |  |  |  |  |  |  |
| 8 | 2.1.1.1.2 | **Definir la Organización del Proyecto** | 4h |  |  | 361FS+6h |  | 2018-07-16 | 2018-07-17 |  |  |
| 9 | 2.1.1.1.3 | Kick-off Interno del Proyecto | 6h |  |  | 372FS+4h |  | 2018-07-17 | 2018-07-18 | Gerente de Proyecto PlanERP; Líder del Proyecto/Desarrollo PlanERP |  |
| 10 | 2.1.1.2 | **Preparación del kick-off del Proyecto** | 1.14d |  |  |  | 1.14d | 2018-07-18 |  |  |  |
| 11 | 2.1.1.2.1 | Comunicación con el Cliente | 4h |  |  | 9FS+6h |  | 2018-07-18 | 2018-07-18 | Gerente de Proyecto PlanERP |  |
| 12 | 2.1.1.2.2 | Crear la presentación del kick-off | 4h |  |  | 11FS+4h |  | 2018-07-18 | 2018-07-19 | Gerente de Proyecto PlanERP; Líder del Proyecto/Desarrollo PlanERP |  |
| 13 | 2.1.1.3 | **Reunión de Kick-off** | 0.29d |  |  |  | 0.29d | 2018-07-19 |  |  |  |
| 14 | 2.1.1.3.1 | Realizar la reunión de kick-off | 2h |  |  | 12FS+4h |  | 2018-07-19 | 2018-07-19 | Carpinteros; Gerente de Proyecto PlanERP; Líder del Proyecto/Desarrollo PlanERP |  |
| 15 | 2.1.1.4 | **Entrega e Instalación del Software** | 4.29d |  |  |  | 4.29d | 2018-07-19 |  |  |  |
| 16 | 2.1.1.4.1 | **Instalar SIIM en Servidor** | 4d |  |  | 13FS+0.29d | 4d | 2018-07-19 |  | Electricistas |  |
| 17 | 2.1.1.4.1.1 | 1 Dirección de Desarrollo Territorial (No incluye Catastro) | 2h |  |  |  |  | 2018-07-19 | 2018-07-19 |  |  |
| 18 | 2.1.1.4.1.2 | 4 Dirección de Justicia y Vigilancia | 2h |  |  | 17FS+2h |  | 2018-07-19 | 2018-07-19 |  |  |
| 19 | 2.1.1.4.1.3 | 5 Dirección de Desarrollo Humano y Social | 2h |  |  | 18FS+2h |  | 2018-07-19 | 2018-07-20 |  |  |
| 20 | 2.1.1.4.1.4 | 8.3 Rentas | 2h |  |  | 19FS+2h |  | 2018-07-20 | 2018-07-20 |  |  |
| 21 | 2.1.1.4.1.5 | 8.4 Tesorería | 2h |  |  | 20FS+2h |  | 2018-07-20 | 2018-07-20 |  |  |
| 22 | 2.1.1.4.1.6 | 9.1 Mercados | 1h |  |  | 21FS+2h |  | 2018-07-20 | 2018-07-20 |  |  |
| 23 | 2.1.1.4.1.7 | 9.2 Cementerio | 1h |  |  | 22FS+1h |  | 2018-07-20 | 2018-07-20 |  |  |
| 24 | 2.1.1.4.1.8 | 9.3 Camal | 1h |  |  | 23FS+1h |  | 2018-07-20 | 2018-07-20 |  |  |
| 25 | 2.1.1.4.1.9 | 10 Registro de la Propiedad y Mercantil | 2h |  |  | 24FS+1h |  | 2018-07-20 | 2018-07-23 |  |  |
| 26 | 2.1.1.4.1.10 | 11 Administración de bomberos | 1h |  |  | 25FS+2h |  | 2018-07-23 | 2018-07-23 |  |  |
| 27 | 2.1.1.4.1.11 | 12 CRM para ciudadanos. Ventanilla Única | 2h |  |  | 26FS+1h |  | 2018-07-23 | 2018-07-23 |  |  |
| 28 | 2.1.1.4.1.12 | 15.1 BI Desarrollo Territorial | 2h |  |  | 27FS+2h |  | 2018-07-23 | 2018-07-23 |  |  |
| 29 | 2.1.1.4.1.13 | 15.5 BI Obras Públicas Municipales | 2h |  |  | 28FS+2h |  | 2018-07-23 | 2018-07-24 |  |  |
| 30 | 2.1.1.4.1.14 | 15.7 BI Registro de la Propiedad y Mercantil | 2h |  |  | 29FS+2h |  | 2018-07-24 | 2018-07-24 |  |  |
| 31 | 2.1.1.4.1.15 | 16.1 Consultas Portal Web | 2h |  |  | 30FS+2h |  | 2018-07-24 | 2018-07-24 |  |  |
| 32 | 2.1.1.4.1.16 | 16.2 Aplicación para móviles (APP) | 2h |  |  | 31FS+2h |  | 2018-07-24 | 2018-07-24 |  |  |
| 33 | 2.1.1.4.2 | Entrega de Software | 2h |  |  | 16FS+4d |  | 2018-07-24 | 2018-07-25 | Gerente de Proyecto PlanERP |  |
| 34 | 2.1.1.5 | Revisar la ETAPA del Proyecto | 1d |  |  | 15FS+4.29d |  | 2018-07-25 | 2018-07-25 | Gerente de Proyecto PlanERP; Analista de Calidad PlanERP |  |
| 35 | 2.1.1.6 | HITO: FINALIZACION ETAPA 1 | 0d |  |  | 34FS+1d |  | 2018-07-25 | 2018-07-25 |  | 5% |

| ID | WBS | Task | Duration | Predecessors | Remaining | Actual start | Actual finish | Resources | Porcentage Avance |
| --- | --- | --- | --- | --- | --- | --- | --- | --- | --- |
| 36 | 2.1.2 | **ETAPA 2: Levantamiento de Características Institucionales - Módulos SC y AC** | 14.71d |  | 14.71d | 2018-07-25 |  |  |  |
| 37 | 2.1.2.1 | **Actividades de Gestión del Proyecto** | 1.14d |  | 1.14d | 2018-07-25 |  |  |  |
| 38 | 2.1.2.1.1 | Revisión del Plan del Proyecto | 4h | 34FS+1d |  | 2018-07-25 | 2018-07-26 | Gerente de Proyecto PlanERP |  |
| 39 | 2.1.2.1.2 | Programar talleres de requerimientos de Entidad | 4h | 38FS+4h |  | 2018-07-26 | 2018-07-26 | Gerente de Proyecto PlanERP |  |
| 40 | 2.1.2.2 | **Sesiones de Requerimientos del Entidad** | 12d |  | 12d | 2018-07-26 |  |  |  |
| 41 | 2.1.2.2.1 | Conducir Sesiones de Requerimientos | 10d | 39FS+4h |  | 2018-07-26 | 2018-08-08 | Electricistas; Analista Procesos PlanERP; Consultor Especialista en Procesos de GADs PlanERP |  |
| 42 | 2.1.2.2.2 | Crear Documento de Características del Entidad | 2d | 41FS+10d |  | 2018-08-08 | 2018-08-10 | Analista Procesos PlanERP; Electricistas; Consultor Especialista en Procesos de GADs PlanERP |  |
| 43 | 2.1.2.3 | **Revisar el Documento de Características del Entidad** | 0.57d |  | 0.57d | 2018-08-10 |  |  |  |
| 44 | 2.1.2.3.1 | Revisar el Documento de Características del Entidad | 2h | 42FS+2d |  | 2018-08-10 | 2018-08-10 | Gerente de Proyecto PlanERP; Analista de Calidad PlanERP; Consultor Especialista en Procesos de GADs PlanERP; Analista Procesos PlanERP |  |
| 45 | 2.1.2.3.2 | Revisar el Plan del Proyecto | 2h | 44FS+2h |  | 2018-08-10 | 2018-08-10 | Gerente de Proyecto PlanERP |  |
| 46 | 2.1.2.4 | Revisar la ETAPA del Proyecto | 1d | 43FS+0.57d |  | 2018-08-10 | 2018-08-13 | Gerente de Proyecto PlanERP; Líder del Proyecto/Desarrollo PlanERP; Analista de Calidad PlanERP |  |
| 47 | 2.1.2.5 | HITO: FINALIZACION ETAPA 2 | 0d | 46FS+1d |  | 2018-08-13 | 2018-08-13 |  | 10% |
| 48 | 2.1.3 | **ETAPA 3: Migración de Datos, Configuración y Pruebas de Operación - Módulos SC y AC** | 56.57d | 36FS+14.71d | 56.57d | 2018-08-13 |  |  |  |
| 49 | 2.1.3.1 | **Gestión General del Proyecto** | 0.57d |  | 0.57d | 2018-08-13 |  |  |  |
| 50 | 2.1.3.1.1 | Planificar cambio Organizacional | 2h | 46FS+1d |  | 2018-08-13 | 2018-08-14 | Gerente de Proyecto PlanERP; Líder del Proyecto/Desarrollo PlanERP |  |
| 51 | 2.1.3.1.2 | Planificar Entrenamiento a Usuarios Finales | 2h | 50FS+2h |  | 2018-08-14 | 2018-08-14 | Gerente de Proyecto PlanERP; Líder del Proyecto/Desarrollo PlanERP |  |
| 52 | 2.1.3.1.3 | Definir y Preparar la Migración de Datos | 2h | 50FS+2h |  | 2018-08-14 | 2018-08-14 | Electricistas; Líder del Proyecto/Desarrollo PlanERP; Especialista Base de Datos PlanERP |  |
| 53 | 2.1.3.2 | **Configuración del Sistema en Producción** | 56d |  | 56d | 2018-08-14 |  |  |  |
| 54 | 2.1.3.2.1 | Instalar el SIIM en Producción | 1d | 52FS+2h |  | 2018-08-14 | 2018-08-15 | Electricistas; Analista Procesos PlanERP; Líder del Proyecto/Desarrollo PlanERP; Especialista Base de Datos PlanERP |  |
| 55 | 2.1.3.2.2 | Configurar Inicialización del Sistema | 1d | 54FS+1d |  | 2018-08-15 | 2018-08-16 | Electricistas; Analista Procesos PlanERP; Líder del Proyecto/Desarrollo PlanERP; Especialista Base de Datos PlanERP |  |
| 56 | 2.1.3.2.3 | Realizar la Migración de Datos | 54d | 55FS+1d |  | 2018-08-16 | 2018-10-22 | Electricistas; Analista Procesos PlanERP; Líder del Proyecto/Desarrollo PlanERP; Especialista Base de Datos PlanERP |  |
| 57 | 2.1.3.2.4 | Desarrollar Adaptaciones al Software | 10d | 55FS+1d |  | 2018-08-16 | 2018-08-28 | Electricistas; Analista Procesos PlanERP; Líder del Proyecto/Desarrollo PlanERP; Especialista Base de Datos PlanERP |  |
| 58 | 2.1.3.2.5 | Configuración del Sistema en base al Documento de Características del Entidad | 3d | 57FS+10d |  | 2018-08-28 | 2018-08-31 | Electricistas; Analista Procesos PlanERP; Líder del Proyecto/Desarrollo PlanERP; Especialista Base de Datos PlanERP |  |
| 59 | 2.1.3.2.6 | Configurar Interfaces | 1d | 58FS+3d |  | 2018-08-31 | 2018-09-03 | Electricistas; Analista Procesos PlanERP; Líder del Proyecto/Desarrollo PlanERP; Especialista Base de Datos PlanERP |  |
| 60 | 2.1.3.2.7 | Configurar Usuarios y Autorizaciones | 1d | 59FS+1d |  | 2018-09-03 | 2018-09-04 | Electricistas; Analista Procesos PlanERP; Líder del Proyecto/Desarrollo PlanERP; Especialista Base de Datos PlanERP |  |

| ID | WBS | Task | Duration | Predecessors | Remaining | Actual start | Actual finish | Resources |
| --- | --- | --- | --- | --- | --- | --- | --- | --- |
| 61 | 2.1.3.3 | **Gestión del Cambio Organizacional** | 1d |  | 1d | 2018-09-04 |  |  |
| 62 | 2.1.3.3.1 | Conducir la comunicación de la Gestión de Cambios (si es aplicable) | 1d | 60FS+1d |  | 2018-09-04 | 2018-09-05 | Carpinteros; Gerente de Proyecto PlanERP; Consultor Especialista en Procesos de GADs PlanERP |
| 63 | 2.1.3.4 | **Pruebas de validación/aceptación del Sistema** | 3.43d |  | 3.43d | 2018-09-05 |  |  |
| 64 | 2.1.3.4.1 | Mantener la Lista Maestra de Procesos de Entidad | 2h | 62FS+1d |  | 2018-09-05 | 2018-09-05 | Carpinteros; Gerente de Proyecto PlanERP; Líder del Proyecto/Desarrollo PlanERP; Analista Procesos PlanERP; Consultor Especialista en Procesos de GADs PlanERP |
| 65 | 2.1.3.4.2 | **Conducir Talleres de Validación** | 3.14d | 64FS+2h | 3.14d | 2018-09-05 |  | Carpinteros; Analista Procesos PlanERP; Analista de Calidad PlanERP; Consultor Especialista en Procesos de GADs PlanERP |
| 66 | 2.1.3.4.2.1 | 1 Dirección de Desarrollo Territorial (No incluye Catastro) | 2h |  |  | 2018-09-05 | 2018-09-05 |  |
| 67 | 2.1.3.4.2.2 | 4 Dirección de Justicia y Vigilancia | 2h | 66FS+2h |  | 2018-09-05 | 2018-09-05 |  |
| 68 | 2.1.3.4.2.3 | 5 Dirección de Desarrollo Humano y Social | 1h | 67FS+2h |  | 2018-09-05 | 2018-09-05 |  |
| 69 | 2.1.3.4.2.4 | 8.3 Rentas | 2h | 68FS+1h |  | 2018-09-05 | 2018-09-06 |  |
| 70 | 2.1.3.4.2.5 | 8.4 Tesorería | 2h | 69FS+2h |  | 2018-09-06 | 2018-09-06 |  |
| 71 | 2.1.3.4.2.6 | 9.1 Mercados | 1h | 70FS+2h |  | 2018-09-06 | 2018-09-06 |  |
| 72 | 2.1.3.4.2.7 | 9.2 Cementerio | 1h | 71FS+1h |  | 2018-09-06 | 2018-09-06 |  |
| 73 | 2.1.3.4.2.8 | 9.3 Camal | 1h | 72FS+1h |  | 2018-09-06 | 2018-09-06 |  |
| 74 | 2.1.3.4.2.9 | 10 Registro de la Propiedad y Mercantil | 2h | 73FS+1h |  | 2018-09-06 | 2018-09-07 |  |
| 75 | 2.1.3.4.2.10 | 11 Administración de bomberos | 1h | 74FS+2h |  | 2018-09-07 | 2018-09-07 |  |
| 76 | 2.1.3.4.2.11 | 12 CRM para ciudadanos. Ventanilla Única | 2h | 75FS+1h |  | 2018-09-07 | 2018-09-07 |  |
| 77 | 2.1.3.4.2.12 | 15.1 BI Desarrollo Territorial | 1h | 76FS+2h |  | 2018-09-07 | 2018-09-07 |  |
| 78 | 2.1.3.4.2.13 | 15.5 BI Obras Públicas Municipales | 1h | 77FS+1h |  | 2018-09-07 | 2018-09-07 |  |
| 79 | 2.1.3.4.2.14 | 15.7 BI Registro de la Propiedad y Mercantil | 1h | 78FS+1h |  | 2018-09-07 | 2018-09-07 |  |
| 80 | 2.1.3.4.2.15 | 16.1 Consultas Portal Web | 1h | 79FS+1h |  | 2018-09-07 | 2018-09-07 |  |
| 81 | 2.1.3.4.2.16 | 16.2 Aplicación para móviles (APP) | 1h | 80FS+1h |  | 2018-09-07 | 2018-09-10 |  |
| 82 | 2.1.3.5 | **Pruebas de Aceptacion Sistema** | 5.43d |  | 5.43d | 2018-09-10 |  |  |
| 83 | 2.1.3.5.1 | Definir casos de prueba y alcance | 2h | 81FS+1h, 32FS+2h |  | 2018-09-10 | 2018-09-10 | Carpinteros; Líder del Proyecto/Desarrollo PlanERP; Analista de Calidad PlanERP; Electricistas |
| 84 | 2.1.3.5.2 | Preparar ambiente de pruebas | 1d | 83FS+2h |  | 2018-09-10 | 2018-09-11 | Electricistas; Carpinteros; Líder del Proyecto/Desarrollo PlanERP; Analista de Calidad PlanERP |

| ID | WBS | Task | Duration | Predecessors | Remaining | Actual start | Actual finish | Resources | Porcentage Avance |
| --- | --- | --- | --- | --- | --- | --- | --- | --- | --- |
| 85 | 2.1.3.5.3 | **Ejecutar el plan de pruebas de Aceptacion del Sistema** | 3.14d | 84FS+1d | 3.14d | 2018-09-11 |  | Carpinteros; Líder del Proyecto/Desarrollo PlanERP; Analista de Calidad PlanERP; Electricistas; Consultor Especialista en Procesos de GADs PlanERP |  |
| 86 | 2.1.3.5.3.1 | 1 Dirección de Desarrollo Territorial (No incluye Catastro) | 2h |  |  | 2018-09-11 | 2018-09-11 |  |  |
| 87 | 2.1.3.5.3.2 | 4 Dirección de Justicia y Vigilancia | 2h | 86FS+2h |  | 2018-09-11 | 2018-09-11 |  |  |
| 88 | 2.1.3.5.3.3 | 5 Dirección de Desarrollo Humano y Social | 1h | 87FS+2h |  | 2018-09-11 | 2018-09-11 |  |  |
| 89 | 2.1.3.5.3.4 | 8.3 Rentas | 2h | 88FS+1h |  | 2018-09-11 | 2018-09-12 |  |  |
| 90 | 2.1.3.5.3.5 | 8.4 Tesorería | 2h | 89FS+2h |  | 2018-09-12 | 2018-09-12 |  |  |
| 91 | 2.1.3.5.3.6 | 9.1 Mercados | 1h | 90FS+2h |  | 2018-09-12 | 2018-09-12 |  |  |
| 92 | 2.1.3.5.3.7 | 9.2 Cementerio | 1h | 91FS+1h |  | 2018-09-12 | 2018-09-12 |  |  |
| 93 | 2.1.3.5.3.8 | 9.3 Camal | 1h | 92FS+1h |  | 2018-09-12 | 2018-09-12 |  |  |
| 94 | 2.1.3.5.3.9 | 10 Registro de la Propiedad y Mercantil | 2h | 93FS+1h |  | 2018-09-12 | 2018-09-12 |  |  |
| 95 | 2.1.3.5.3.10 | 11 Administración de bomberos | 1h | 94FS+2h |  | 2018-09-12 | 2018-09-13 |  |  |
| 96 | 2.1.3.5.3.11 | 12 CRM para ciudadanos. Ventanilla Única | 2h | 95FS+1h |  | 2018-09-13 | 2018-09-13 |  |  |
| 97 | 2.1.3.5.3.12 | 15.1 BI Desarrollo Territorial | 1h | 96FS+2h |  | 2018-09-13 | 2018-09-13 |  |  |
| 98 | 2.1.3.5.3.13 | 15.5 BI Obras Públicas Municipales | 1h | 97FS+1h |  | 2018-09-13 | 2018-09-13 |  |  |
| 99 | 2.1.3.5.3.14 | 15.7 BI Registro de la Propiedad y Mercantil | 1h | 98FS+1h |  | 2018-09-13 | 2018-09-13 |  |  |
| 100 | 2.1.3.5.3.15 | 16.1 Consultas Portal Web | 1h | 99FS+1h |  | 2018-09-13 | 2018-09-13 |  |  |
| 101 | 2.1.3.5.3.16 | 16.2 Aplicación para móviles (APP) | 1h | 100FS+1h |  | 2018-09-13 | 2018-09-13 |  |  |
| 102 | 2.1.3.5.4 | Revisar los resultados de las pruebas y necesidades de cambios | 1d | 101FS+1h, 81FS+1h, 32FS+2h |  | 2018-09-13 | 2018-09-14 | Gerente de Proyecto PlanERP; Analista de Calidad PlanERP; Consultor Especialista en Procesos de GADs PlanERP |  |
| 103 | 2.1.3.6 | **Planificar Salida a Producción y Soporte** | 0.29d |  | 0.29d | 2018-09-14 |  |  |  |
| 104 | 2.1.3.6.1 | Definir Plan de Salida a Producción | 2h | 102FS+1d |  | 2018-09-14 | 2018-09-17 | Carpinteros; Gerente de Proyecto PlanERP; Líder del Proyecto/Desarrollo PlanERP |  |
| 105 | 2.1.3.6.2 | Planificar Estrategia de Soporte | 2h | 102FS+1d |  | 2018-09-14 | 2018-09-17 | Carpinteros; Gerente de Proyecto PlanERP; Líder del Proyecto/Desarrollo PlanERP |  |
| 106 | 2.1.3.6.3 | Planificar Administración del Sistema | 2h | 102FS+1d |  | 2018-09-14 | 2018-09-17 | Carpinteros; Gerente de Proyecto PlanERP; Líder del Proyecto/Desarrollo PlanERP |  |
| 107 | 2.1.3.7 | Revisar la ETAPA del Proyecto | 1d | 103FS+0.29d |  | 2018-09-17 | 2018-09-17 | Gerente de Proyecto PlanERP; Líder del Proyecto/Desarrollo PlanERP; Analista de Calidad PlanERP |  |
| 108 | 2.1.3.8 | HITO: FINALIZACION ETAPA 3 | 0d | 107FS+1d |  | 2018-09-17 | 2018-09-17 |  | 25% |

| ID | WBS | Task | Duration | Predecessors | Remaining | Actual start | Actual finish | Resources |
| --- | --- | --- | --- | --- | --- | --- | --- | --- |
| 109 | 2.1.4 | **ETAPA 4: Preparación Final previo Despliegue en Producción - Módulos SC y AC** | 19.86d |  | 19.86d | 2018-09-17 |  |  |
| 110 | 2.1.4.1 | **Gestión General del Proyecto** | 0.57d |  | 0.57d | 2018-09-17 |  |  |
| 111 | 2.1.4.1.1 | Confirmar el Plan de Entrenamiento | 2h | 107FS+1d |  | 2018-09-17 | 2018-09-18 | Electricistas; Gerente de Proyecto PlanERP; Líder del Proyecto/Desarrollo PlanERP |
| 112 | 2.1.4.1.2 | Finalizar plan de Salida a Producción | 2h | 111FS+2h |  | 2018-09-18 | 2018-09-18 | Electricistas; Gerente de Proyecto PlanERP; Líder del Proyecto/Desarrollo PlanERP; Analista de Calidad PlanERP |
| 113 | 2.1.4.2 | **Entrenamiento en Modulos de Areas Funcionales Fase 1** | 16d | 110FS+0.57d | 16d | 2018-09-18 |  |  |
| 114 | 2.1.4.2.1 | **Entrenamiento de Usuarios Funcionales y Certificación de Procesos** | 12d | 112FS+2h | 12d | 2018-09-18 |  | Carpinteros; Decorador de Interiores; Electricistas; Analista Procesos PlanERP; Consultor Especialista en Procesos de GADs PlanERP |
| 115 | 2.1.4.2.1.1 | 1 Dirección de Desarrollo Territorial (No incluye Catastro) | 1d |  |  | 2018-09-18 | 2018-09-19 |  |
| 116 | 2.1.4.2.1.2 | 4 Dirección de Justicia y Vigilancia | 1d | 115FS+1d |  | 2018-09-19 | 2018-09-20 |  |
| 117 | 2.1.4.2.1.3 | 5 Dirección de Desarrollo Humano y Social | 1d | 116FS+1d |  | 2018-09-20 | 2018-09-21 |  |
| 118 | 2.1.4.2.1.4 | 8.3 Rentas | 1d | 117FS+1d |  | 2018-09-21 | 2018-09-21 |  |
| 119 | 2.1.4.2.1.5 | 8.4 Tesorería | 1d | 118FS+1d |  | 2018-09-21 | 2018-09-24 |  |
| 120 | 2.1.4.2.1.6 | 9.1 Mercados | 0.5d | 119FS+1d |  | 2018-09-24 | 2018-09-25 |  |
| 121 | 2.1.4.2.1.7 | 9.2 Cementerio | 0.5d | 120FS+0.5d |  | 2018-09-25 | 2018-09-25 |  |
| 122 | 2.1.4.2.1.8 | 9.3 Camal | 0.5d | 121FS+0.5d |  | 2018-09-25 | 2018-09-26 |  |
| 123 | 2.1.4.2.1.9 | 10 Registro de la Propiedad y Mercantil | 1d | 122FS+0.5d |  | 2018-09-26 | 2018-09-26 |  |
| 124 | 2.1.4.2.1.10 | 11 Administración de bomberos | 0.5d | 123FS+1d |  | 2018-09-27 | 2018-09-27 |  |
| 125 | 2.1.4.2.1.11 | 12 CRM para ciudadanos. Ventanilla Única | 1d | 124FS+0.5d |  | 2018-09-27 | 2018-09-28 |  |
| 126 | 2.1.4.2.1.12 | 15.1 BI Desarrollo Territorial | 0.5d | 125FS+1d |  | 2018-09-28 | 2018-09-28 |  |
| 127 | 2.1.4.2.1.13 | 15.5 BI Obras Públicas Municipales | 0.5d | 126FS+0.5d |  | 2018-09-28 | 2018-10-01 |  |
| 128 | 2.1.4.2.1.14 | 15.7 BI Registro de la Propiedad y Mercantil | 0.5d | 127FS+0.5d |  | 2018-10-01 | 2018-10-01 |  |
| 129 | 2.1.4.2.1.15 | 16.1 Consultas Portal Web | 1d | 128FS+0.5d |  | 2018-10-01 | 2018-10-02 |  |
| 130 | 2.1.4.2.1.16 | 16.2 Aplicación para móviles (APP) | 0.5d | 129FS+1d |  | 2018-10-02 | 2018-10-02 |  |
| 131 | 2.1.4.2.2 | Entrenamiento de Usuario Técnicos | 4d | 130FS+0.5d, 101FS+1h, 81FS+1h, 32FS+2h |  | 2018-10-02 | 2018-10-08 | Electricistas; Especialista Base de Datos PlanERP; Líder del Proyecto/Desarrollo PlanERP |
| 132 | 2.1.4.3 | **Preparación del Sistema** | 0.86d | 113FS+16d | 0.86d | 2018-10-08 |  |  |
| 133 | 2.1.4.3.1 | Completar la Administración del Sistema | 3h |  |  | 2018-10-08 | 2018-10-08 | Electricistas; Analista Procesos PlanERP |
| 134 | 2.1.4.3.2 | Comprobación de la Puesta a Producción | 3h | 133FS+3h |  | 2018-10-08 | 2018-10-09 | Electricistas; Analista de Calidad PlanERP; Líder del Proyecto/Desarrollo PlanERP |

| ID | WBS | Task | Duration | Predecessors | Remaining | Actual start | Actual finish | Resources | Porcentage Avance |
| --- | --- | --- | --- | --- | --- | --- | --- | --- | --- |
| 135 | 2.1.4.4 | **Transición** | 2.14d | 132FS+0.86d | 2.14d | 2018-10-09 |  |  |  |
| 136 | 2.1.4.4.1 | Finalizar Procesamiento de Sistemas Legados | 1h |  |  | 2018-10-09 | 2018-10-09 | Carpinteros; Líder del Proyecto/Desarrollo PlanERP; Especialista Base de Datos PlanERP |  |
| 137 | 2.1.4.4.2 | Realizar la Salida a Producción - Carga Inicial y Configuración Inicial | 2d | 136FS+1h |  | 2018-10-09 | 2018-10-11 | Carpinteros; Líder del Proyecto/Desarrollo PlanERP; Especialista Base de Datos PlanERP |  |
| 138 | 2.1.4.5 | Revisar la ETAPA del Proyecto | 2h | 135FS+2.14d |  | 2018-10-11 | 2018-10-11 | Gerente de Proyecto PlanERP; Líder del Proyecto/Desarrollo PlanERP; Analista de Calidad PlanERP |  |
| 139 | 2.1.4.6 | HITO: FINALIZACION ETAPA 4 | 0d | 138FS+2h |  | 2018-10-11 | 2018-10-11 |  | 35% |
| 140 | 2.1.5 | **ETAPA 5: Despliegue en Producción y Soporte Técnico - Módulos SC y AC** | 30d | 109FS+19.86d | 30d | 2018-10-11 |  |  |  |
| 141 | 2.1.5.1 | **Soporte en Producción** | 30d |  | 30d | 2018-10-11 |  |  |  |
| 142 | 2.1.5.1.1 | Soporte durante la Salida a Producción | 30d | 138FS+2h |  | 2018-10-11 | 2018-11-16 | Electricistas; Analista Procesos PlanERP; Especialista Base de Datos PlanERP; Consultor Especialista en Procesos de GADs PlanERP |  |
| 143 | 2.1.5.1.2 | Resolver incidentes críticos | 20d | 138FS+2h |  | 2018-10-11 | 2018-11-05 | Electricistas; Analista Procesos PlanERP; Especialista Base de Datos PlanERP; Consultor Especialista en Procesos de GADs PlanERP |  |
| 144 | 2.1.5.1.3 | Entregar el soporte y Administración al cliente | 1d |  |  | 2018-10-11 | 2018-10-12 | Electricistas; Analista Procesos PlanERP; Especialista Base de Datos PlanERP; Consultor Especialista en Procesos de GADs PlanERP |  |
| 145 | 2.1.5.2 | **Mejora Continua** | 10d |  | 10d | 2018-10-11 |  |  |  |
| 146 | 2.1.5.2.1 | Monitoreo del Sistema y Acompañamiento ETAPA1 | 10d | 138FS+2h |  | 2018-10-11 | 2018-10-24 | Electricistas; Carpinteros; Especialista Base de Datos PlanERP; Líder del Proyecto/Desarrollo PlanERP; Consultor Especialista en Procesos de GADs PlanERP |  |
| 147 | 2.1.5.2.2 | Ajustes y Configuraciones finales al Software acorde a necesidades Entidad | 10d | 138FS+2h |  | 2018-10-11 | 2018-10-24 | Electricistas; Carpinteros; Especialista Base de Datos PlanERP; Líder del Proyecto/Desarrollo PlanERP; Consultor Especialista en Procesos de GADs PlanERP |  |
| 148 | 2.1.5.3 | **Cierre de la ETAPA 5** | 0.29d |  | 0.29d | 2018-10-24 |  |  |  |
| 149 | 2.1.5.3.1 | Reunión de Cierre de la ETAPA 5 | 2h | 145FS+10d |  | 2018-10-24 | 2018-10-24 | Carpinteros; Electricistas; Gerente de Proyecto PlanERP; Líder del Proyecto/Desarrollo PlanERP; Analista de Calidad PlanERP |  |
| 150 | 2.1.5.4 | HITO: FIN DE LA ETAPA 5 | 0d | 149FS+2h |  | 2018-10-24 | 2018-10-24 |  | 40% |
| 151 | 2.1.6 | **ETAPA 6: Estabilización, Apoyo Emisión 2019 y Desarrollo de funcionalidades no establecidas en el Alcance Contractual** | 57.29d |  | 57.29d | 2018-11-16 |  |  |  |
| 152 | 2.1.6.1 | Depuración de Errores de Calidad de Información fuente migrada (Base Oracle) | 30d | 140FS+30d |  | 2018-11-16 | 2018-12-24 |  |  |
| 153 | 2.1.6.2 | Soporte y Mantenimiento de Módulos de la Fase 1 | 30d | 140FS+30d |  | 2018-11-16 | 2018-12-24 |  |  |
| 154 | 2.1.6.3 | Adaptaciones a Software para incluir Nuevas funcionalidades no contempladas en alcance proyecto | 30d | 140FS+30d |  | 2018-11-16 | 2018-12-24 |  |  |
| 155 | 2.1.6.4 | Implementación de Licencia temporal de Modulo de Catastro Urbano SIIM | 20d |  |  | 2018-12-03 | 2018-12-26 |  |  |
| 156 | 2.1.6.5 | Migración de información de Emisión de Impuestos de Catastro Urbano 2019 | 20d |  |  | 2018-12-03 | 2018-12-26 |  |  |
| 157 | 2.1.6.6 | Creación de interfaces mediante ETLs para integración entre Sistema Oracle y SIIM para la recaudación de Impuestos 2019 de Catastro Urbano | 20d |  |  | 2018-12-03 | 2018-12-26 |  |  |
| 158 | 2.1.6.7 | Soporte en Recaudación de Impuestos de Catastro urbano y mejoras 2019 | 25d | 157FS+20d |  | 2018-12-26 | 2019-01-25 |  |  |

| ID | WBS | Task | Duration | Predecessors | Remaining | Actual start | Actual finish | Resources | Porcentage Avance |
| --- | --- | --- | --- | --- | --- | --- | --- | --- | --- |
| 159 | 2.1.6.8 | **Cierre de la FASE 1** | 0.29d |  | 0.29d | 2019-01-25 |  |  |  |
| 160 | 2.1.6.8.1 | Reunión de Cierre de la FASE 1 | 2h | 158FS+25d |  | 2019-01-25 | 2019-01-25 | Carpinteros; Electricistas; Gerente de Proyecto PlanERP; Líder del Proyecto/Desarrollo PlanERP; Analista de Calidad PlanERP |  |
| 161 | 2.1.6.8.2 | HITO: FIN DE LA FASE 1 | 0d | 160FS+2h |  | 2019-01-25 | 2019-01-25 |  | 50% |
| 162 | 2.2 | **FASE 2: Implementación de Módulos de Planificación de Recursos Institucionales - PRI** | 88.29d |  | 88.29d | 2019-01-25 |  |  |  |
| 163 | 2.2.1 | **ETAPA 1: Instalación del SIIM - Módulos PRI** | 4.14d |  | 4.14d | 2019-01-25 |  |  |  |
| 164 | 2.2.1.1 | **Entrega e Instalación del Software** | 3.14d |  | 3.14d | 2019-01-25 |  |  |  |
| 165 | 2.2.1.1.1 | **Instalar SIIM en Servidor** | 2.86d |  | 2.86d | 2019-01-25 |  | Electricistas |  |
| 166 | 2.2.1.1.1.1 | **Instalar Módulos PRI** | 2.86d | 151FS+57.29d | 2.86d | 2019-01-25 |  | Electricistas; Líder del Proyecto/Desarrollo PlanERP |  |
| 167 | 2.2.1.1.1.1.1 | 2.1 Administración Técnica | 2h |  |  | 2019-01-25 | 2019-01-25 |  |  |
| 168 | 2.2.1.1.1.1.2 | 2.2 Salud Ocupacional y Riesgos | 2h | 167FS+2h |  | 2019-01-25 | 2019-01-28 |  |  |
| 169 | 2.2.1.1.1.1.3 | 3.2 Adquisiciones | 2h | 168FS+2h |  | 2019-01-28 | 2019-01-28 |  |  |
| 170 | 2.2.1.1.1.1.4 | 6.1 Administración de Bienes | 2h | 169FS+2h |  | 2019-01-28 | 2019-01-28 |  |  |
| 171 | 2.2.1.1.1.1.5 | 8.1 Contabilidad | 2h | 170FS+2h |  | 2019-01-28 | 2019-01-28 |  |  |
| 172 | 2.2.1.1.1.1.6 | 8.2 Presupuestos | 2h | 171FS+2h |  | 2019-01-28 | 2019-01-29 |  |  |
| 173 | 2.2.1.1.1.1.7 | 13 CRM para Urbanizaciones | 2h | 172FS+2h |  | 2019-01-29 | 2019-01-29 |  |  |
| 174 | 2.2.1.1.1.1.8 | 14 Dirección de Planificación Institucional (Incluye control de proyectos de Obras Públicas | 2h | 173FS+2h |  | 2019-01-29 | 2019-01-29 |  |  |
| 175 | 2.2.1.1.1.1.9 | 15.6 Servicios Corporativos | 2h | 174FS+2h |  | 2019-01-29 | 2019-01-29 |  |  |
| 176 | 2.2.1.1.1.1.10 | 15.8 BI Planificación Institucional | 2h | 175FS+2h |  | 2019-01-29 | 2019-01-30 |  |  |
| 177 | 2.2.1.1.2 | Entrega de Software | 2h | 165FS+2.86d |  | 2019-01-30 | 2019-01-30 | Gerente de Proyecto PlanERP |  |
| 178 | 2.2.1.2 | Revisar la ETAPA del Proyecto | 1d | 164FS+3.14d |  | 2019-01-30 | 2019-01-31 | Gerente de Proyecto PlanERP; Analista de Calidad PlanERP |  |
| 179 | 2.2.1.3 | HITO: FINALIZACION ETAPA 1 | 0d | 178FS+1d |  | 2019-01-31 | 2019-01-31 |  | 53% |
| 180 | 2.2.2 | **ETAPA 2: Levantamiento de Características Institucionales - Módulos PRI** | 8.57d | 163FS+4.14d | 8.57d | 2019-01-31 |  |  |  |
| 181 | 2.2.2.1 | **Actividades de Gestión del Proyecto** | 0.57d |  | 0.57d | 2019-01-31 |  |  |  |
| 182 | 2.2.2.1.1 | Revisión del Plan del Proyecto | 2h |  |  | 2019-01-31 | 2019-01-31 | Gerente de Proyecto PlanERP |  |
| 183 | 2.2.2.1.2 | Programar talleres de requerimientos de Entidad | 2h | 182FS+2h |  | 2019-01-31 | 2019-01-31 | Gerente de Proyecto PlanERP |  |

| ID | WBS | Task | Duration | Predecessors | Remaining | Actual start | Actual finish | Resources | Porcentage Avance |
| --- | --- | --- | --- | --- | --- | --- | --- | --- | --- |
| 184 | 2.2.2.2 | **Sesiones de Requerimientos del Entidad** | 6d | 181FS+0.57d | 6d | 2019-01-31 |  |  |  |
| 185 | 2.2.2.2.1 | Conducir Sesiones de Requerimientos | 5d |  |  | 2019-01-31 | 2019-02-07 | Electricistas; Analista Procesos PlanERP; Consultor Especialista en Procesos de GADs PlanERP |  |
| 186 | 2.2.2.2.2 | Crear Documento de Características del Entidad | 1d | 185FS+5d |  | 2019-02-07 | 2019-02-08 | Analista Procesos PlanERP; Electricistas; Consultor Especialista en Procesos de GADs PlanERP |  |
| 187 | 2.2.2.3 | **Revisar el Documento de Características del Entidad** | 1d | 184FS+6d | 1d | 2019-02-08 |  |  |  |
| 188 | 2.2.2.3.1 | Revisar el Documento de Características del Entidad | 4h |  |  | 2019-02-08 | 2019-02-08 | Gerente de Proyecto PlanERP; Analista de Calidad PlanERP; Consultor Especialista en Procesos de GADs PlanERP; Analista Procesos PlanERP |  |
| 189 | 2.2.2.3.2 | Revisar el Plan del Proyecto | 3h | 188FS+4h |  | 2019-02-08 | 2019-02-08 | Gerente de Proyecto PlanERP |  |
| 190 | 2.2.2.4 | Revisar la ETAPA del Proyecto | 1d | 187FS+1d |  | 2019-02-08 | 2019-02-11 | Gerente de Proyecto PlanERP; Líder del Proyecto/Desarrollo PlanERP; Analista de Calidad PlanERP |  |
| 191 | 2.2.2.5 | HITO: FINALIZACION ETAPA 2 | 0d | 190FS+1d |  | 2019-02-11 | 2019-02-11 |  | 55% |
| 192 | 2.2.3 | **ETAPA 3: Migración de Datos, Configuración y Pruebas de Operación de Módulos - Módulos PRI** | 33.71d | 180FS+8.57d | 33.71d | 2019-02-11 |  |  |  |
| 193 | 2.2.3.1 | **Gestión General del Proyecto** | 1.57d |  | 1.57d | 2019-02-11 |  |  |  |
| 194 | 2.2.3.1.1 | Planificar cambio Organizacional | 3h |  |  | 2019-02-11 | 2019-02-12 | Gerente de Proyecto PlanERP; Líder del Proyecto/Desarrollo PlanERP |  |
| 195 | 2.2.3.1.2 | Planificar Entrenamiento a Usuarios Finales | 4h | 194FS+3h |  | 2019-02-12 | 2019-02-12 | Gerente de Proyecto PlanERP; Líder del Proyecto/Desarrollo PlanERP |  |
| 196 | 2.2.3.1.3 | Definir y Preparar la Migración de Datos | 4h | 195FS+4h |  | 2019-02-12 | 2019-02-13 | Electricistas; Líder del Proyecto/Desarrollo PlanERP; Especialista Base de Datos PlanERP |  |
| 197 | 2.2.3.2 | **Configuración del Sistema en Producción** | 19.57d | 193FS+1.57d | 19.57d | 2019-02-13 |  |  |  |
| 198 | 2.2.3.2.1 | Instalar el SIIM en Producción | 4h |  |  | 2019-02-13 | 2019-02-13 | Electricistas; Analista Procesos PlanERP; Líder del Proyecto/Desarrollo PlanERP; Especialista Base de Datos PlanERP |  |
| 199 | 2.2.3.2.2 | Configurar Inicialización del Sistema | 1d | 198FS+4h |  | 2019-02-13 | 2019-02-14 | Electricistas; Analista Procesos PlanERP; Líder del Proyecto/Desarrollo PlanERP; Especialista Base de Datos PlanERP |  |
| 200 | 2.2.3.2.3 | Realizar la Migración de Datos | 13d | 199FS+1d |  | 2019-02-14 | 2019-03-01 | Electricistas; Analista Procesos PlanERP; Líder del Proyecto/Desarrollo PlanERP; Especialista Base de Datos PlanERP |  |
| 201 | 2.2.3.2.4 | Desarrollar Adaptaciones al Software | 2d | 200FS+13d |  | 2019-03-01 | 2019-03-05 | Electricistas; Analista Procesos PlanERP; Líder del Proyecto/Desarrollo PlanERP; Especialista Base de Datos PlanERP |  |
| 202 | 2.2.3.2.5 | Configuración del Sistema en base al Documento de Características del Entidad | 1d | 201FS+2d |  | 2019-03-05 | 2019-03-06 | Electricistas; Analista Procesos PlanERP; Líder del Proyecto/Desarrollo PlanERP; Especialista Base de Datos PlanERP |  |
| 203 | 2.2.3.2.6 | Configurar Interfaces | 1d | 202FS+1d |  | 2019-03-06 | 2019-03-07 | Electricistas; Analista Procesos PlanERP; Líder del Proyecto/Desarrollo PlanERP; Especialista Base de Datos PlanERP |  |
| 204 | 2.2.3.2.7 | Configurar Usuarios y Autorizaciones | 1d | 203FS+1d |  | 2019-03-07 | 2019-03-08 | Electricistas; Analista Procesos PlanERP; Líder del Proyecto/Desarrollo PlanERP; Especialista Base de Datos PlanERP |  |
| 205 | 2.2.3.3 | **Gestión del Cambio Organizacional** | 0.29d | 197FS+19.57d | 0.29d | 2019-03-08 |  |  |  |
| 206 | 2.2.3.3.1 | Conducir la comunicación de la Gestión de Cambios (si es aplicable) | 2h |  |  | 2019-03-08 | 2019-03-08 | Carpinteros; Gerente de Proyecto PlanERP; Consultor Especialista en Procesos de GADs PlanERP |  |
| 207 | 2.2.3.4 | **Pruebas de validación del Sistema** | 4.57d | 205FS+0.29d | 4.57d | 2019-03-08 |  |  |  |
| 208 | 2.2.3.4.1 | Mantener la Lista Maestra de Procesos de Entidad | 4h |  |  | 2019-03-08 | 2019-03-11 | Carpinteros; Gerente de Proyecto PlanERP; Líder del Proyecto/Desarrollo PlanERP; Analista Procesos PlanERP; Consultor Especialista en Procesos de GADs PlanERP |  |

| ID | WBS | Task | Duration | Predecessors | Remaining | Actual start | Actual finish | Resources |
| --- | --- | --- | --- | --- | --- | --- | --- | --- |
| 209 | 2.2.3.4.2 | **Conducir Talleres de Validación** | 4d | 208FS+4h | 4d | 2019-03-11 |  | Carpinteros; Analista Procesos PlanERP; Analista de Calidad PlanERP; Consultor Especialista en Procesos de GADs PlanERP |
| 210 | 2.2.3.4.2.1 | 2.1 Administración Técnica | 4h |  |  | 2019-03-11 | 2019-03-11 |  |
| 211 | 2.2.3.4.2.2 | 2.2 Salud Ocupacional y Riesgos | 2h | 210FS+4h |  | 2019-03-11 | 2019-03-11 |  |
| 212 | 2.2.3.4.2.3 | 3.2 Adquisiciones | 4h | 211FS+2h |  | 2019-03-11 | 2019-03-12 |  |
| 213 | 2.2.3.4.2.4 | 6.1 Administración de Bienes | 2h | 212FS+4h |  | 2019-03-12 | 2019-03-12 |  |
| 214 | 2.2.3.4.2.5 | 8.1 Contabilidad | 4h | 213FS+2h |  | 2019-03-12 | 2019-03-13 |  |
| 215 | 2.2.3.4.2.6 | 8.2 Presupuestos | 4h | 214FS+4h |  | 2019-03-13 | 2019-03-13 |  |
| 216 | 2.2.3.4.2.7 | 13 CRM para Urbanizaciones | 2h | 215FS+4h |  | 2019-03-13 | 2019-03-13 |  |
| 217 | 2.2.3.4.2.8 | 14 Dirección de Planificación Institucional (Incluye control de proyectos de Obras Públicas) | 2h | 216FS+2h |  | 2019-03-13 | 2019-03-14 |  |
| 218 | 2.2.3.4.2.9 | 15.6 BI Servicios Corporativos | 2h | 217FS+2h |  | 2019-03-14 | 2019-03-14 |  |
| 219 | 2.2.3.4.2.10 | 15.8 BI Planificación Institucional | 2h | 218FS+2h |  | 2019-03-14 | 2019-03-14 |  |
| 220 | 2.2.3.5 | **Pruebas de aceptacion del Sistema** | 5.43d | 207FS+4.57d | 5.43d | 2019-03-14 |  |  |
| 221 | 2.2.3.5.1 | Definir casos de prueba y alcance | 3h |  |  | 2019-03-14 | 2019-03-14 | Carpinteros; Líder del Proyecto/Desarrollo PlanERP; Analista de Calidad PlanERP; Electricistas |
| 222 | 2.2.3.5.2 | Preparar ambiente de pruebas | 1d | 221FS+3h |  | 2019-03-14 | 2019-03-15 | Electricistas; Carpinteros; Líder del Proyecto/Desarrollo PlanERP; Analista de Calidad PlanERP |
| 223 | 2.2.3.5.3 | **Ejecutar el plan de pruebas** | 4d | 222FS+1d | 4d | 2019-03-15 |  | Carpinteros; Líder del Proyecto/Desarrollo PlanERP; Analista de Calidad PlanERP; Electricistas; Consultor Especialista en Procesos de GADs PlanERP |
| 224 | 2.2.3.5.3.1 | 2.1 Administración Técnica | 4h |  |  | 2019-03-15 | 2019-03-18 |  |
| 225 | 2.2.3.5.3.2 | 2.2 Salud Ocupacional y Riesgos | 2h | 224FS+4h |  | 2019-03-18 | 2019-03-18 |  |
| 226 | 2.2.3.5.3.3 | 3.2 Adquisiciones | 4h | 225FS+2h |  | 2019-03-18 | 2019-03-19 |  |
| 227 | 2.2.3.5.3.4 | 6.1 Administración de Bienes | 2h | 226FS+4h |  | 2019-03-19 | 2019-03-19 |  |
| 228 | 2.2.3.5.3.5 | 8.1 Contabilidad | 4h | 227FS+2h |  | 2019-03-19 | 2019-03-19 |  |
| 229 | 2.2.3.5.3.6 | 8.2 Presupuestos | 4h | 228FS+4h |  | 2019-03-19 | 2019-03-20 |  |
| 230 | 2.2.3.5.3.7 | 13 CRM para Urbanizaciones | 2h | 229FS+4h |  | 2019-03-20 | 2019-03-20 |  |
| 231 | 2.2.3.5.3.8 | 14 Dirección de Planificación Institucional (Incluye control de proyectos de Obras Públicas) | 2h | 230FS+2h |  | 2019-03-20 | 2019-03-20 |  |
| 232 | 2.2.3.5.3.9 | 15.6 BI Servicios Corporativos | 2h | 231FS+2h |  | 2019-03-20 | 2019-03-21 |  |
| 233 | 2.2.3.5.3.10 | 15.8 BI Planificación Institucional | 2h | 232FS+2h |  | 2019-03-21 | 2019-03-21 |  |
| 234 | 2.2.3.5.4 | Revisar los resultados de las pruebas y necesidades de cambios | 1d |  |  | 2019-03-14 | 2019-03-15 | Gerente de Proyecto PlanERP; Analista de Calidad PlanERP; Consultor Especialista en Procesos de GADs PlanERP |

| ID | WBS | Task | Duration | Predecessors | Remaining | Actual start | Actual finish | Resources | Porcentage Avance |
| --- | --- | --- | --- | --- | --- | --- | --- | --- | --- |
| 235 | 2.2.3.6 | **Planificar Salida a Producción y Soporte** | 1.29d | 220FS+5.43d | 1.29d | 2019-03-21 |  |  |  |
| 236 | 2.2.3.6.1 | Definir Plan de Salida a Producción | 3h |  |  | 2019-03-21 | 2019-03-21 | Carpinteros; Gerente de Proyecto PlanERP; Líder del Proyecto/Desarrollo PlanERP |  |
| 237 | 2.2.3.6.2 | Planificar Estrategia de Soporte | 3h | 236FS+3h |  | 2019-03-21 | 2019-03-22 | Carpinteros; Gerente de Proyecto PlanERP; Líder del Proyecto/Desarrollo PlanERP |  |
| 238 | 2.2.3.6.3 | Planificar Administración del Sistema | 3h | 237FS+3h |  | 2019-03-22 | 2019-03-22 | Carpinteros; Gerente de Proyecto PlanERP; Líder del Proyecto/Desarrollo PlanERP |  |
| 239 | 2.2.3.7 | Revisar la ETAPA del Proyecto | 1d | 235FS+1.29d |  | 2019-03-22 | 2019-03-25 | Gerente de Proyecto PlanERP; Líder del Proyecto/Desarrollo PlanERP; Analista de Calidad PlanERP |  |
| 240 | 2.2.3.8 | HITO: FINALIZACION ETAPA 3 | 0d | 239FS+1d |  | 2019-03-25 | 2019-03-25 |  | %60 |
| 241 | 2.2.4 | **ETAPA 4: Preparación Final previo Despliegue en Producción - Módulos PRI** | 11.43d | 192FS+33.71d | 11.43d | 2019-03-25 |  |  |  |
| 242 | 2.2.4.1 | **Gestión General del Proyecto** | 1.14d |  | 1.14d | 2019-03-25 |  |  |  |
| 243 | 2.2.4.1.1 | Confirmar el Plan de Entrenamiento | 4h |  |  | 2019-03-25 | 2019-03-25 | Electricistas; Gerente de Proyecto PlanERP; Líder del Proyecto/Desarrollo PlanERP |  |
| 244 | 2.2.4.1.2 | Finalizar plan de Salida a Producción | 4h | 243FS+4h |  | 2019-03-25 | 2019-03-26 | Electricistas; Gerente de Proyecto PlanERP; Líder del Proyecto/Desarrollo PlanERP; Analista de Calidad PlanERP |  |
| 245 | 2.2.4.2 | **Entrenamiento** | 6d | 242FS+1.14d | 6d | 2019-03-26 |  |  |  |
| 246 | 2.2.4.2.1 | **Entrenamiento de Usuarios Funcionales y Certificación de Procesos** | 4d |  | 4d | 2019-03-26 |  | Carpinteros; Decorador de Interiores; Electricistas; Analista Procesos PlanERP; Consultor Especialista en Procesos de GADs PlanERP |  |
| 247 | 2.2.4.2.1.1 | 2.1 Administración Técnica | 4h |  |  | 2019-03-26 | 2019-03-26 |  |  |
| 248 | 2.2.4.2.1.2 | 2.2 Salud Ocupacional y Riesgos | 2h | 247FS+4h |  | 2019-03-26 | 2019-03-27 |  |  |
| 249 | 2.2.4.2.1.3 | 3.2 Adquisiciones | 4h | 248FS+2h |  | 2019-03-27 | 2019-03-27 |  |  |
| 250 | 2.2.4.2.1.4 | 6.1 Administración de Bienes | 2h | 249FS+4h |  | 2019-03-27 | 2019-03-27 |  |  |
| 251 | 2.2.4.2.1.5 | 8.1 Contabilidad | 4h | 250FS+2h |  | 2019-03-27 | 2019-03-28 |  |  |
| 252 | 2.2.4.2.1.6 | 8.2 Presupuestos | 4h | 251FS+4h |  | 2019-03-28 | 2019-03-28 |  |  |
| 253 | 2.2.4.2.1.7 | 13 CRM para Urbanizaciones | 2h | 252FS+4h |  | 2019-03-28 | 2019-03-29 |  |  |
| 254 | 2.2.4.2.1.8 | 14 Dirección de Planificación Institucional (Incluye control de proyectos de Obras Públicas) | 2h | 253FS+2h |  | 2019-03-29 | 2019-03-29 |  |  |
| 255 | 2.2.4.2.1.9 | 15.6 BI Servicios Corporativos | 2h | 254FS+2h |  | 2019-03-29 | 2019-03-29 |  |  |
| 256 | 2.2.4.2.1.10 | 15.8 BI Planificación Institucional | 2h | 255FS+2h |  | 2019-03-29 | 2019-03-29 |  |  |
| 257 | 2.2.4.2.2 | Entrenamiento de Usuario Técnicos | 6d |  |  | 2019-03-26 | 2019-04-02 | Electricistas; Especialista Base de Datos PlanERP; Líder del Proyecto/Desarrollo PlanERP |  |
| 258 | 2.2.4.3 | **Preparación del Sistema** | 1.43d | 245FS+6d | 1.43d | 2019-04-02 |  |  |  |
| 259 | 2.2.4.3.1 | Completar la Administración del Sistema | 5h |  |  | 2019-04-02 | 2019-04-03 | Electricistas; Analista Procesos PlanERP |  |
| 260 | 2.2.4.3.2 | Comprobación de la Puesta a Producción | 5h | 259FS+5h |  | 2019-04-03 | 2019-04-03 | Electricistas; Analista de Calidad PlanERP; Líder del Proyecto/Desarrollo PlanERP |  |

| ID | WBS | Task | Duration | Predecessors | Remaining | Actual start | Actual finish | Resources | Porcentage Avance |
| --- | --- | --- | --- | --- | --- | --- | --- | --- | --- |
| 261 | 2.2.4.4 | **Transición** | 2.57d | 258FS+1.43d | 2.57d | 2019-04-03 |  |  |  |
| 262 | 2.2.4.4.1 | Finalizar Procesamiento de Sistemas Legados | 4h |  |  | 2019-04-03 | 2019-04-04 | Carpinteros; Líder del Proyecto/Desarrollo PlanERP; Especialista Base de Datos PlanERP |  |
| 263 | 2.2.4.4.2 | Realizar la Salida a Producción - Carga Inicial y Configuración Inicial | 2d | 262FS+4h |  | 2019-04-04 | 2019-04-08 | Carpinteros; Líder del Proyecto/Desarrollo PlanERP; Especialista Base de Datos PlanERP |  |
| 264 | 2.2.4.5 | Revisar la ETAPA del Proyecto | 2h | 261FS+2.57d |  | 2019-04-08 | 2019-04-08 | Gerente de Proyecto PlanERP; Líder del Proyecto/Desarrollo PlanERP; Analista de Calidad PlanERP |  |
| 265 | 2.2.4.6 | HITO: FINALIZACION ETAPA 4 | 0d | 264FS+2h |  | 2019-04-08 | 2019-04-08 |  | 80% |
| 266 | 2.2.5 | **ETAPA 5: Despliegue en Producción y Soporte Técnico - Módulos PRI** | 30.43d | 241FS+11.43d | 30.43d | 2019-04-08 |  |  |  |
| 267 | 2.2.5.1 | **Soporte en Producción** | 15d |  | 15d | 2019-04-08 |  |  |  |
| 268 | 2.2.5.1.1 | Soporte durante la Salida a Producción | 15d |  |  | 2019-04-08 | 2019-04-25 | Electricistas; Analista Procesos PlanERP; Especialista Base de Datos PlanERP; Consultor Especialista en Procesos de GADs PlanERP |  |
| 269 | 2.2.5.1.2 | Resolver incidentes críticos | 15d | 264FS+2h |  | 2019-04-08 | 2019-04-25 | Electricistas; Analista Procesos PlanERP; Especialista Base de Datos PlanERP; Consultor Especialista en Procesos de GADs PlanERP |  |
| 270 | 2.2.5.1.3 | Entregar el soporte y Administración al cliente | 2d | 264FS+2h |  | 2019-04-08 | 2019-04-10 | Electricistas; Analista Procesos PlanERP; Especialista Base de Datos PlanERP; Consultor Especialista en Procesos de GADs PlanERP |  |
| 271 | 2.2.5.2 | **Mejora Continua** | 15d | 267FS+15d | 15d | 2019-04-25 |  |  |  |
| 272 | 2.2.5.2.1 | Monitoreo del Sistema y Acompañamiento ETAPA2 | 15d | 264FS+2h |  | 2019-04-25 | 2019-05-14 | Electricistas; Carpinteros; Especialista Base de Datos PlanERP; Líder del Proyecto/Desarrollo PlanERP; Consultor Especialista en Procesos de GADs PlanERP |  |
| 273 | 2.2.5.2.2 | Ajustes y Configuraciones finales al Software acorde a necesidades Entidad | 15d | 264FS+2h |  | 2019-04-25 | 2019-05-14 | Electricistas; Carpinteros; Especialista Base de Datos PlanERP; Líder del Proyecto/Desarrollo PlanERP; Consultor Especialista en Procesos de GADs PlanERP |  |
| 274 | 2.2.5.3 | **Cierre de la FASE 2** | 0.43d | 271FS+15d | 0.43d | 2019-05-14 |  |  |  |
| 275 | 2.2.5.3.1 | Reunión de Cierre de la FASE 2 | 3h |  |  | 2019-05-14 | 2019-05-14 | Carpinteros; Electricistas; Gerente de Proyecto PlanERP; Líder del Proyecto/Desarrollo PlanERP; Analista de Calidad PlanERP |  |
| 276 | 2.2.5.4 | HITO: FIN DE LA FASE 2 | 0d | 274FS+0.43d |  | 2019-05-14 | 2019-05-14 |  | 85% |
| 277 | 2.3 | **FASE 3: Implementación de Módulos de Planificación de Recursos Institucionales - PRI** | 76.86d |  | 76.86d | 2019-04-08 |  |  |  |
| 278 | 2.3.1 | **ETAPA 1: Instalación del SIIM - Módulos PRI** | 4.29d |  | 4.29d | 2019-04-08 |  |  |  |
| 279 | 2.3.1.1 | **Entrega e Instalación del Software** | 3.29d |  | 3.29d | 2019-04-08 |  |  |  |
| 280 | 2.3.1.1.1 | **Instalar SIIM en Servidor** | 3d |  | 3d | 2019-04-08 |  | Electricistas |  |
| 281 | 2.3.1.1.1.1 | Instalar Módulos PRI | 3d | 265 |  | 2019-04-08 | 2019-04-10 | Electricistas; Líder del Proyecto/Desarrollo PlanERP |  |
| 282 | 2.3.1.1.2 | Entrega de Software | 2h | 280FS+3d |  | 2019-04-10 | 2019-04-11 | Gerente de Proyecto PlanERP |  |
| 283 | 2.3.1.2 | Revisar la ETAPA del Proyecto | 1d | 279FS+3.29d |  | 2019-04-11 | 2019-04-12 | Gerente de Proyecto PlanERP; Analista de Calidad PlanERP |  |
| 284 | 2.3.1.3 | HITO: FINALIZACION ETAPA 1 | 0d | 283FS+1d |  | 2019-04-12 | 2019-04-12 |  | 86% |

| ID | WBS | Task | Duration | Predecessors | Remaining | Actual start | Actual finish | Resources | Porcentage Avance |
| --- | --- | --- | --- | --- | --- | --- | --- | --- | --- |
| 285 | 2.3.2 | **ETAPA 2: Levantamiento de Características Institucionales - Módulos PRI** | 8.57d | 278FS+4.29d | 8.57d | 2019-04-12 |  |  |  |
| 286 | 2.3.2.1 | **Actividades de Gestión del Proyecto** | 0.57d |  | 0.57d | 2019-04-12 |  |  |  |
| 287 | 2.3.2.1.1 | Revisión del Plan del Proyecto | 2h |  |  | 2019-04-12 | 2019-04-12 | Gerente de Proyecto PlanERP |  |
| 288 | 2.3.2.1.2 | Programar talleres de requerimientos de Entidad | 2h | 287FS+2h |  | 2019-04-12 | 2019-04-12 | Gerente de Proyecto PlanERP |  |
| 289 | 2.3.2.2 | **Sesiones de Requerimientos del Entidad** | 6d | 286FS+0.57d | 6d | 2019-04-12 |  |  |  |
| 290 | 2.3.2.2.1 | Conducir Sesiones de Requerimientos | 3d |  |  | 2019-04-12 | 2019-04-17 | Electricistas; Analista Procesos PlanERP; Consultor Especialista en Procesos de GADs PlanERP |  |
| 291 | 2.3.2.2.2 | Crear Documento de Características del Entidad | 3d | 290FS+3d |  | 2019-04-17 | 2019-04-19 | Analista Procesos PlanERP; Electricistas; Consultor Especialista en Procesos de GADs PlanERP |  |
| 292 | 2.3.2.3 | **Revisar el Documento de Características del Entidad** | 1d | 289FS+6d | 1d | 2019-04-19 |  |  |  |
| 293 | 2.3.2.3.1 | Revisar el Documento de Características del Entidad | 4h |  |  | 2019-04-19 | 2019-04-22 | Gerente de Proyecto PlanERP; Analista de Calidad PlanERP; Consultor Especialista en Procesos de GADs PlanERP; Analista Procesos PlanERP |  |
| 294 | 2.3.2.3.2 | Revisar el Plan del Proyecto | 3h | 293FS+4h |  | 2019-04-22 | 2019-04-22 | Gerente de Proyecto PlanERP |  |
| 295 | 2.3.2.4 | Revisar la ETAPA del Proyecto | 1d | 292FS+1d |  | 2019-04-22 | 2019-04-23 | Gerente de Proyecto PlanERP; Líder del Proyecto/Desarrollo PlanERP; Analista de Calidad PlanERP |  |
| 296 | 2.3.2.5 | HITO: FINALIZACION ETAPA 2 | 0d | 295FS+1d |  | 2019-04-23 | 2019-04-23 |  | 87% |
| 297 | 2.3.3 | **ETAPA 3: Migración de Datos, Configuración y Pruebas de Operación de Módulos - Módulos PRI** | 33.43d | 285FS+8.57d | 33.43d | 2019-04-23 |  |  |  |
| 298 | 2.3.3.1 | **Gestión General del Proyecto** | 1.57d |  | 1.57d | 2019-04-23 |  |  |  |
| 299 | 2.3.3.1.1 | Planificar cambio Organizacional | 3h |  |  | 2019-04-23 | 2019-04-23 | Gerente de Proyecto PlanERP; Líder del Proyecto/Desarrollo PlanERP |  |
| 300 | 2.3.3.1.2 | Planificar Entrenamiento a Usuarios Finales | 4h | 299FS+3h |  | 2019-04-23 | 2019-04-24 | Gerente de Proyecto PlanERP; Líder del Proyecto/Desarrollo PlanERP |  |
| 301 | 2.3.3.1.3 | Definir y Preparar la Migración de Datos | 4h | 300FS+4h |  | 2019-04-24 | 2019-04-24 | Electricistas; Líder del Proyecto/Desarrollo PlanERP; Especialista Base de Datos PlanERP |  |
| 302 | 2.3.3.2 | **Configuración del Sistema en Producción** | 20.57d | 298FS+1.57d | 20.57d | 2019-04-24 |  |  |  |
| 303 | 2.3.3.2.1 | Instalar el SIIM en Producción | 4h |  |  | 2019-04-24 | 2019-04-25 | Electricistas; Analista Procesos PlanERP; Líder del Proyecto/Desarrollo PlanERP; Especialista Base de Datos PlanERP |  |
| 304 | 2.3.3.2.2 | Configurar Inicialización del Sistema | 1d | 303FS+4h |  | 2019-04-25 | 2019-04-26 | Electricistas; Analista Procesos PlanERP; Líder del Proyecto/Desarrollo PlanERP; Especialista Base de Datos PlanERP |  |
| 305 | 2.3.3.2.3 | Realizar la Migración de Datos | 10d | 304FS+1d |  | 2019-04-26 | 2019-05-09 | Electricistas; Analista Procesos PlanERP; Líder del Proyecto/Desarrollo PlanERP; Especialista Base de Datos PlanERP |  |
| 306 | 2.3.3.2.4 | Desarrollar Adaptaciones al Software | 5d | 305FS+10d |  | 2019-05-09 | 2019-05-15 | Electricistas; Analista Procesos PlanERP; Líder del Proyecto/Desarrollo PlanERP; Especialista Base de Datos PlanERP |  |
| 307 | 2.3.3.2.5 | Configuración del Sistema en base al Documento de Características del Entidad | 2d | 306FS+5d |  | 2019-05-15 | 2019-05-17 | Electricistas; Analista Procesos PlanERP; Líder del Proyecto/Desarrollo PlanERP; Especialista Base de Datos PlanERP |  |
| 308 | 2.3.3.2.6 | Configurar Interfaces | 1d | 307FS+2d |  | 2019-05-17 | 2019-05-20 | Electricistas; Analista Procesos PlanERP; Líder del Proyecto/Desarrollo PlanERP; Especialista Base de Datos PlanERP |  |
| 309 | 2.3.3.2.7 | Configurar Usuarios y Autorizaciones | 1d | 308FS+1d |  | 2019-05-20 | 2019-05-20 | Electricistas; Analista Procesos PlanERP; Líder del Proyecto/Desarrollo PlanERP; Especialista Base de Datos PlanERP |  |

| ID | WBS | Task | Duration | Predecessors | Remaining | Actual start | Actual finish | Resources |
| --- | --- | --- | --- | --- | --- | --- | --- | --- |
| 310 | 2.3.3.3 | **Gestión del Cambio Organizacional** | 2d | 302FS+20.57d | 2d | 2019-05-20 |  |  |
| 311 | 2.3.3.3.1 | Conducir la comunicación de la Gestión de Cambios (si es aplicable) | 2d |  |  | 2019-05-20 | 2019-05-22 | Carpinteros; Gerente de Proyecto PlanERP; Consultor Especialista en Procesos de GADs PlanERP |
| 312 | 2.3.3.4 | **Pruebas de validación/aceptación del Sistema** | 2.57d | 310FS+2d | 2.57d | 2019-05-22 |  |  |
| 313 | 2.3.3.4.1 | Mantener la Lista Maestra de Procesos de Entidad | 4h |  |  | 2019-05-22 | 2019-05-23 | Carpinteros; Gerente de Proyecto PlanERP; Líder del Proyecto/Desarrollo PlanERP; Analista Procesos PlanERP; Consultor Especialista en Procesos de GADs PlanERP |
| 314 | 2.3.3.4.2 | **Conducir Talleres de Validación** | 2d | 313FS+4h | 2d | 2019-05-23 |  | Carpinteros; Analista Procesos PlanERP; Analista de Calidad PlanERP; Consultor Especialista en Procesos de GADs PlanERP |
| 315 | 2.3.3.4.2.1 | 3.1 Compras Públicas | 2h |  |  | 2019-05-23 | 2019-05-23 |  |
| 316 | 2.3.3.4.2.2 | 6.2 Servicios Generales | 2h | 315FS+2h |  | 2019-05-23 | 2019-05-23 |  |
| 317 | 2.3.3.4.2.3 | 8.5 Gestión Jurídica - Financiera | 2h | 316FS+2h |  | 2019-05-23 | 2019-05-23 |  |
| 318 | 2.3.3.4.2.4 | 15.2 BI Financiero | 2h | 317FS+2h |  | 2019-05-23 | 2019-05-24 |  |
| 319 | 2.3.3.4.2.5 | 15.3 BI Administración del Talento Humano | 2h | 318FS+2h |  | 2019-05-24 | 2019-05-24 |  |
| 320 | 2.3.3.4.2.6 | 15.4 BI Compras Públicas | 2h | 319FS+2h |  | 2019-05-24 | 2019-05-24 |  |
| 321 | 2.3.3.4.2.7 | 15.9 Tablero de Control | 2h | 320FS+2h |  | 2019-05-24 | 2019-05-24 |  |
| 322 | 2.3.3.5 | **Pruebas de aceptacion del Sistema** | 4.43d | 312FS+2.57d | 4.43d | 2019-05-24 |  |  |
| 323 | 2.3.3.5.1 | Definir casos de prueba y alcance | 3h |  |  | 2019-05-24 | 2019-05-27 | Carpinteros; Líder del Proyecto/Desarrollo PlanERP; Analista de Calidad PlanERP; Electricistas |
| 324 | 2.3.3.5.2 | Preparar ambiente de pruebas | 1d | 323FS+3h |  | 2019-05-27 | 2019-05-28 | Electricistas; Carpinteros; Líder del Proyecto/Desarrollo PlanERP; Analista de Calidad PlanERP |
| 325 | 2.3.3.5.3 | **Ejecutar el plan de pruebas** | 2d | 324FS+1d | 2d | 2019-05-28 |  | Carpinteros; Líder del Proyecto/Desarrollo PlanERP; Analista de Calidad PlanERP; Electricistas; Consultor Especialista en Procesos de GADs PlanERP |
| 326 | 2.3.3.5.3.1 | 3.1 Compras Públicas | 2h |  |  | 2019-05-28 | 2019-05-28 |  |
| 327 | 2.3.3.5.3.2 | 6.2 Servicios Generales | 2h | 326FS+2h |  | 2019-05-28 | 2019-05-28 |  |
| 328 | 2.3.3.5.3.3 | 8.5 Gestión Jurídica - Financiera | 2h | 327FS+2h |  | 2019-05-28 | 2019-05-28 |  |
| 329 | 2.3.3.5.3.4 | 15.2 BI Financiero | 2h | 328FS+2h |  | 2019-05-28 | 2019-05-29 |  |
| 330 | 2.3.3.5.3.5 | 15.3 BI Administración del Talento Humano | 2h | 329FS+2h |  | 2019-05-29 | 2019-05-29 |  |
| 331 | 2.3.3.5.3.6 | 15.4 BI Compras Públicas | 2h | 330FS+2h |  | 2019-05-29 | 2019-05-29 |  |
| 332 | 2.3.3.5.3.7 | 15.9 Tablero de Control | 2h | 331FS+2h |  | 2019-05-29 | 2019-05-29 |  |
| 333 | 2.3.3.5.4 | Revisar los resultados de las pruebas y necesidades de cambios | 1d | 332FS+2h, 321FS+2h |  | 2019-05-29 | 2019-05-30 | Gerente de Proyecto PlanERP; Analista de Calidad PlanERP; Consultor Especialista en Procesos de GADs PlanERP |

| ID | WBS | Task | Duration | Predecessors | Remaining | Actual start | Actual finish | Resources | Porcentage Avance |
| --- | --- | --- | --- | --- | --- | --- | --- | --- | --- |
| 334 | 2.3.3.6 | **Planificar Salida a Producción y Soporte** | 1.29d | 322FS+4.43d | 1.29d | 2019-05-30 |  |  |  |
| 335 | 2.3.3.6.1 | Definir Plan de Salida a Producción | 3h |  |  | 2019-05-30 | 2019-05-31 | Carpinteros; Gerente de Proyecto PlanERP; Líder del Proyecto/Desarrollo PlanERP |  |
| 336 | 2.3.3.6.2 | Planificar Estrategia de Soporte | 3h | 335FS+3h |  | 2019-05-31 | 2019-05-31 | Carpinteros; Gerente de Proyecto PlanERP; Líder del Proyecto/Desarrollo PlanERP |  |
| 337 | 2.3.3.6.3 | Planificar Administración del Sistema | 3h | 336FS+3h |  | 2019-05-31 | 2019-05-31 | Carpinteros; Gerente de Proyecto PlanERP; Líder del Proyecto/Desarrollo PlanERP |  |
| 338 | 2.3.3.7 | Revisar la ETAPA del Proyecto | 1d | 334FS+1.29d |  | 2019-05-31 | 2019-06-03 | Gerente de Proyecto PlanERP; Líder del Proyecto/Desarrollo PlanERP; Analista de Calidad PlanERP |  |
| 339 | 2.3.3.8 | HITO: FINALIZACION ETAPA 3 | 0d | 338FS+1d |  | 2019-06-03 | 2019-06-03 |  | 95% |
| 340 | 2.3.4 | **ETAPA 4: Preparación Final previo Despliegue en Producción - Módulos PRI** | 12.43d | 297FS+33.43d | 12.43d | 2019-06-03 |  |  |  |
| 341 | 2.3.4.1 | **Gestión General del Proyecto** | 1.14d |  | 1.14d | 2019-06-03 |  |  |  |
| 342 | 2.3.4.1.1 | Confirmar el Plan de Entrenamiento | 4h |  |  | 2019-06-03 | 2019-06-04 | Electricistas; Gerente de Proyecto PlanERP; Líder del Proyecto/Desarrollo PlanERP |  |
| 343 | 2.3.4.1.2 | Finalizar plan de Salida a Producción | 4h | 342FS+4h |  | 2019-06-04 | 2019-06-04 | Electricistas; Gerente de Proyecto PlanERP; Líder del Proyecto/Desarrollo PlanERP; Analista de Calidad PlanERP |  |
| 344 | 2.3.4.2 | **Entrenamiento** | 7d | 341FS+1.14d | 7d | 2019-06-04 |  |  |  |
| 345 | 2.3.4.2.1 | **Entrenamiento de Usuarios Funcionales y Certificación de Procesos** | 4d |  | 4d | 2019-06-04 |  | Carpinteros; Decorador de Interiores; Electricistas; Analista Procesos PlanERP; Consultor Especialista en Procesos de GADs PlanERP |  |
| 346 | 2.3.4.2.1.1 | 3.1 Compras Públicas | 4h |  |  | 2019-06-04 | 2019-06-05 |  |  |
| 347 | 2.3.4.2.1.2 | 6.2 Servicios Generales | 4h | 346FS+4h |  | 2019-06-05 | 2019-06-05 |  |  |
| 348 | 2.3.4.2.1.3 | 8.5 Gestión Jurídica - Financiera | 4h | 347FS+4h |  | 2019-06-05 | 2019-06-06 |  |  |
| 349 | 2.3.4.2.1.4 | 15.2 BI Financiero | 4h | 348FS+4h |  | 2019-06-06 | 2019-06-06 |  |  |
| 350 | 2.3.4.2.1.5 | 15.3 BI Administración del Talento Humano | 4h | 349FS+4h |  | 2019-06-06 | 2019-06-07 |  |  |
| 351 | 2.3.4.2.1.6 | 15.4 BI Compras Públicas | 4h | 350FS+4h |  | 2019-06-07 | 2019-06-07 |  |  |
| 352 | 2.3.4.2.1.7 | 15.9 Tablero de Control | 4h | 351FS+4h |  | 2019-06-07 | 2019-06-10 |  |  |
| 353 | 2.3.4.2.2 | Entrenamiento de Usuario Técnicos | 3d | 352FS+4h |  | 2019-06-10 | 2019-06-12 | Electricistas; Especialista Base de Datos PlanERP; Líder del Proyecto/Desarrollo PlanERP |  |
| 354 | 2.3.4.3 | **Preparación del Sistema** | 1.43d | 344FS+7d | 1.43d | 2019-06-12 |  |  |  |
| 355 | 2.3.4.3.1 | Completar la Administración del Sistema | 5h |  |  | 2019-06-12 | 2019-06-13 | Electricistas; Analista Procesos PlanERP |  |
| 356 | 2.3.4.3.2 | Comprobación de la Puesta a Producción | 5h | 355FS+5h |  | 2019-06-13 | 2019-06-14 | Electricistas; Analista de Calidad PlanERP; Líder del Proyecto/Desarrollo PlanERP |  |
| 357 | 2.3.4.4 | **Transición** | 2.57d | 354FS+1.43d | 2.57d | 2019-06-14 |  |  |  |
| 358 | 2.3.4.4.1 | Finalizar Procesamiento de Sistemas Legados | 4h |  |  | 2019-06-14 | 2019-06-14 | Carpinteros; Líder del Proyecto/Desarrollo PlanERP; Especialista Base de Datos PlanERP |  |
| 359 | 2.3.4.4.2 | Realizar la Salida a Producción - Carga Inicial y Configuración Inicial | 2d | 358FS+4h |  | 2019-06-14 | 2019-06-18 | Carpinteros; Líder del Proyecto/Desarrollo PlanERP; Especialista Base de Datos PlanERP |  |

| ID | WBS | Task | Duration | Predecessors | Remaining | Actual start | Actual finish | Resources | Porcentage Avance |
| --- | --- | --- | --- | --- | --- | --- | --- | --- | --- |
| 360 | 3 | **Revisar la ETAPA del Proyecto** | 0d | 4FS+7h |  | 2019-06-18 | 2019-06-18 | Gerente de Proyecto PlanERP; Líder del Proyecto/Desarrollo PlanERP; Analista de Calidad PlanERP |  |
| 361 | 3.1 | Marcos | 2w | 360FS+2h |  | 2019-06-18 | 2019-06-18 | Gerente de Proyecto PlanERP; Líder del Proyecto/Desarrollo PlanERP | 98% |
| 362 | 3.2 | Paredes | 2.5w | 361FS+2w, 364FS+19d | 2.5w | 2019-06-21 |  |  |  |
| 363 | 3.3 | Techos | 10d | 361FS+2w | 10d | 2019-06-21 |  |  |  |
| 364 | 4 | **Mecánica** | 0d | 361FS+2w |  | 2019-06-21 | 2019-06-28 |  |  |
| 365 | 4.1 | Calefacción | 36h |  |  | 2019-06-28 | 2019-07-02 |  |  |
| 366 | 4.2 | Aire Acondicionado | 36h | 365SS+36h |  | 2019-07-02 | 2019-07-04 |  |  |
| 367 | 4.3 | Fontanería | 1.25w |  | 1.25w | 2019-06-21 |  |  |  |
| 368 | 4.4 | Electricidad | 2w |  |  | 2019-06-21 | 2019-07-10 |  |  |
| 369 | 5 | **Acabado Exterior** | 0d | 7FS+41.5d |  | 2019-06-21 | 2019-07-10 |  |  |
| 370 | 5.1 | Colocar Puertas | 16h |  | 16h | 2019-07-10 |  |  |  |
| 371 | 5.2 | Instalar Ventanas | 7d |  |  | 2019-07-10 | 2019-07-10 |  |  |
| 372 | 6 | Fin | 0d | 369FS+7d |  | 2019-07-10 | 2019-07-10 | Gerente de Proyecto PlanERP; Líder del Proyecto/Desarrollo PlanERP | 100% |
